# Cronograma sem tempo

How a schedule from MS Project changed from version to version. A marks actual dates.

## Version 1 (saved 2023-05-31)

| ID | WBS | Task | Duration | Start | Finish | Predecessors | Complete | Total float | Constraint |
| --- | --- | --- | --- | --- | --- | --- | --- | --- | --- |
| 1 | 1 | **Projeto Clínica** | 14.62d? | 2023-03-29 09:00 A | 2023-04-18 15:00 |  | 45% | 0d |  |
| 2 | 1.1 | **Prospecção** | 4.25d? | 2023-03-29 09:00 A | 2023-04-04 11:00 |  | 47% | 10.38d |  |
| 3 | 1.1.1 | **PTEC** | 0.88d? | 2023-03-29 09:00 A | 2023-03-29 17:00 |  | 74% | 13.75d |  |
| 4 |  | Estudar domínio de aplicação | 0.12d? | 2023-03-29 09:00 A | 2023-03-29 10:00 A |  | 100% |  | start no earlier than 2023-03-29 09:00 |
| 5 |  | Reunir-se com o fornecedor de requisitos | 0.12d? | 2023-03-29 10:00 A | 2023-03-29 11:00 | 4 | 50% | 14.38d |  |
| 6 |  | Redigir PTEC | 0.38d? | 2023-03-29 11:00 A | 2023-03-29 15:00 A | 5 | 100% |  |  |
| 7 |  | Revisar proposta técnica | 0.12d? | 2023-03-29 15:00 A | 2023-03-29 16:00 | 6 | 60% | 0.01d |  |
| 8 |  | Aprovar PTEC | 0.12d? | 2023-03-29 16:00 A | 2023-03-29 17:00 | 7 | 8% | 13.75d |  |
| 9 | 1.1.2 | **Est. Prel. Tam.** | 0.25d | 2023-04-03 16:00 A | 2023-04-03 18:00 |  |  | 3.5d |  |
| 10 |  | Estimar tamanho do projeto | 0.12d | 2023-04-03 16:00 A | 2023-04-03 17:00 | 7 |  | 3.5d |  |
| 11 |  | Revisar estimativa de tamanho do projeto | 0.12d | 2023-04-03 17:00 | 2023-04-03 18:00 | 10 |  | 3.5d |  |
| 12 | 1.1.3 | **Est. Prel. Cronograma e Orçamento** | 0.25d | 2023-04-04 09:00 | 2023-04-04 11:00 |  |  | 3.5d |  |
| 13 |  | Elaborar cronograma e orçamento preliminares | 0.12d | 2023-04-04 09:00 | 2023-04-04 10:00 | 9 |  | 3.5d |  |
| 14 |  | Revisar cronograma e orçamento preliminares | 0.12d | 2023-04-04 10:00 | 2023-04-04 11:00 | 13 |  | 3.5d |  |
| 15 | 1.2 | **Análises** | 4.75d? | 2023-04-04 11:00 | 2023-04-10 18:00 |  |  | 3.5d |  |
| 16 | 1.2.1 | **Documentos de Requisitos** | 2.75d? | 2023-04-04 11:00 | 2023-04-06 18:00 |  |  | 3.5d |  |
| 17 |  | Reunir-se com o cliente | 0.38d? | 2023-04-04 11:00 | 2023-04-04 15:00 | 14 |  | 3.5d |  |
| 18 |  | Elaborar DRE | 1.38d? | 2023-04-04 15:00 | 2023-04-05 18:00 | 17 |  | 3.5d |  |
| 19 |  | Revisar DRE | 0.75d? | 2023-04-06 09:00 | 2023-04-06 16:00 | 18 |  | 3.5d |  |
| 20 |  | Submeter DTE para aprovação do cliente | 0.25d? | 2023-04-06 16:00 | 2023-04-06 18:00 | 19 |  | 3.5d |  |
| 21 | 1.2.2 | **MRB** | 2d? | 2023-04-07 09:00 | 2023-04-10 18:00 |  |  | 3.5d |  |
| 22 |  | Elaborar MRB | 1.25d? | 2023-04-07 09:00 | 2023-04-10 11:00 | 20 |  | 3.5d |  |
| 23 |  | Revisar MRB | 0.75d? | 2023-04-10 11:00 | 2023-04-10 18:00 | 22 |  | 3.5d |  |
| 24 | 1.3 | **Projeto** | 1.25d? | 2023-04-11 09:00 | 2023-04-12 11:00 |  |  | 3.5d |  |
| 25 | 1.3.1 | **Diagrama de classes** | 1d? | 2023-04-11 09:00 | 2023-04-11 18:00 |  |  | 3.5d |  |
| 26 |  | Elaborar Diagrama de classes | 0.5d? | 2023-04-11 09:00 | 2023-04-11 14:00 | 23 |  | 3.5d |  |
| 27 |  | Revisar Diagrama de classes | 0.38d? | 2023-04-11 14:00 | 2023-04-11 17:00 | 26 |  | 3.5d |  |
| 28 |  | Atualizar MRB | 0.12d? | 2023-04-11 17:00 | 2023-04-11 18:00 | 27 |  | 3.5d |  |
| 29 | 1.3.2 | **Modelos Entidades Relacionamento** | 0.25d? | 2023-04-12 09:00 | 2023-04-12 11:00 |  |  | 3.5d |  |
| 30 |  | Elaborar MER | 0.12d? | 2023-04-12 09:00 | 2023-04-12 10:00 | 28 |  | 3.5d |  |
| 31 |  | Revisar MER | 0.12d? | 2023-04-12 10:00 | 2023-04-12 11:00 | 30 |  | 3.5d |  |
| 32 | 1.4 | **Implementação** | 0.88d? | 2023-04-12 11:00 A | 2023-04-13 10:00 |  | 64% | 3.5d |  |
| 33 | 1.4.1 | **Release 01** | 0.88d | 2023-04-12 11:00 A | 2023-04-13 10:00 A |  | 100% |  |  |
| 34 | 1.4.1.1 | **Implementação** | 0.88d | 2023-04-12 11:00 A | 2023-04-13 10:00 A |  | 100% |  |  |
| 35 | 1.4.1.1.1 | **RC01** | 0.88d | 2023-04-12 11:00 A | 2023-04-13 10:00 A |  | 100% |  |  |
| 36 |  | Implementar RFS01 | 0.88d | 2023-04-12 11:00 A | 2023-04-13 10:00 A | 31 | 100% |  |  |
| 37 |  | Implementar RFSO2 | 0.5d | 2023-04-12 11:00 A | 2023-04-12 16:00 A | 31 | 100% |  |  |
| 38 |  | Implementar RFS03 | 0.5d | 2023-04-12 11:00 A | 2023-04-12 16:00 A | 31 | 100% |  |  |
| 39 |  | Implementar RFSO4 | 0.62d | 2023-04-12 11:00 A | 2023-04-12 17:00 A | 31 | 100% |  |  |
| 40 | 1.4.1.1.2 | **RC02** | 0.88d | 2023-04-12 11:00 A | 2023-04-13 10:00 A |  | 100% |  |  |
| 41 |  | Implementar RFS05 | 0.88d | 2023-04-12 11:00 A | 2023-04-13 10:00 A | 31 | 100% |  |  |
| 42 |  | Implementar RFSO6 | 0.5d | 2023-04-12 11:00 A | 2023-04-12 16:00 A | 31 | 100% |  |  |
| 43 |  | Implementar RFSO7 | 0.5d | 2023-04-12 11:00 A | 2023-04-12 16:00 A | 31 | 100% |  |  |
| 44 |  | Implementar RFSO8 | 0.5d | 2023-04-12 11:00 A | 2023-04-12 16:00 A | 31 | 100% |  |  |
| 45 | 1.4.2 | **Release 02** | 0.88d? | 2023-04-12 11:00 A | 2023-04-13 10:00 A |  | 100% |  |  |
| 46 | 1.4.2.1 | **Implementação** | 0.88d? | 2023-04-12 11:00 A | 2023-04-13 10:00 A |  | 100% |  |  |
| 47 | 1.4.2.1.1 | **RC03** | 0.88d? | 2023-04-12 11:00 A | 2023-04-13 10:00 A |  | 100% |  |  |
| 48 |  | Implementar RFSO9 | 0.88d? | 2023-04-12 11:00 A | 2023-04-13 10:00 A | 31 | 100% |  |  |
| 49 |  | Implementar RFSO10 | 0.62d? | 2023-04-12 11:00 A | 2023-04-12 17:00 A | 31 | 100% |  |  |
| 50 |  | Implementar RFS011 | 0.62d? | 2023-04-12 11:00 A | 2023-04-12 17:00 A | 31 | 100% |  |  |
| 51 |  | Implementar RFSO12 | 0.75d? | 2023-04-12 11:00 A | 2023-04-12 18:00 A | 31 | 100% |  |  |
| 52 | 1.4.2.1.2 | **RC04** | 0.88d? | 2023-04-12 11:00 A | 2023-04-13 10:00 A |  | 100% |  |  |
| 53 |  | Implementar RFS013 | 0.88d? | 2023-04-12 11:00 A | 2023-04-13 10:00 A | 31 | 100% |  |  |
| 54 |  | Implementar RFSO14 | 0.62d? | 2023-04-12 11:00 A | 2023-04-12 17:00 A | 31 | 100% |  |  |
| 55 |  | Implementar RFS015 | 0.62d? | 2023-04-12 11:00 A | 2023-04-12 17:00 A | 31 | 100% |  |  |
| 56 | 1.4.3 | **Release 03** | 0.88d | 2023-04-12 11:00 | 2023-04-13 10:00 |  |  | 3.5d |  |
| 57 | 1.4.3.1 | **Implementação** | 0.88d | 2023-04-12 11:00 | 2023-04-13 10:00 |  |  | 3.5d |  |
| 58 | 1.4.3.1.1 | **RC05** | 0.88d | 2023-04-12 11:00 | 2023-04-13 10:00 |  |  | 3.5d |  |
| 59 |  | Implementar RFSO16 | 0.88d | 2023-04-12 11:00 | 2023-04-13 10:00 | 31 |  | 3.5d |  |
| 60 |  | Implementar RFSO17 | 0.62d | 2023-04-12 11:00 | 2023-04-12 17:00 | 31 |  | 3.75d |  |
| 61 |  | Implementar RFSO18 | 0.62d | 2023-04-12 11:00 | 2023-04-12 17:00 | 31 |  | 3.75d |  |
| 62 |  | Implementar RFSO19 | 0.62d | 2023-04-12 11:00 | 2023-04-12 17:00 | 31 |  | 3.75d |  |
| 63 | 1.4.3.1.2 | **RC06** | 0.88d | 2023-04-12 11:00 | 2023-04-13 10:00 |  |  | 3.5d |  |
| 64 |  | Implementar RFS020 | 0.88d | 2023-04-12 11:00 | 2023-04-13 10:00 | 31 |  | 3.5d |  |
| 65 |  | Implementar RFSO21 | 0.62d | 2023-04-12 11:00 | 2023-04-12 17:00 | 31 |  | 3.75d |  |
| 66 |  | Implementar RFS022 | 0.62d | 2023-04-12 11:00 | 2023-04-12 17:00 | 31 |  | 3.75d |  |
| 67 |  | Implementar RFSO23 | 0.62d | 2023-04-12 11:00 | 2023-04-12 17:00 | 31 |  | 3.75d |  |
| 68 | 1.5 | **Monitoramento e Controle** | 0.62d? | 2023-04-13 10:00 A | 2023-04-13 16:00 |  | 40% | 0.6d |  |
| 69 |  | Acompanhar projeto | 0.62d? | 2023-04-13 10:00 A | 2023-04-13 16:00 | 33 | 40% | 0.6d |  |
| 70 | 1.6 | **Gerência de configuração** | 2.88d? | 2023-04-13 16:00 A | 2023-04-18 15:00 |  | 34% | 0d |  |

| ID | Task | Duration | Start | Finish | Predecessors | Complete | Total float |
| --- | --- | --- | --- | --- | --- | --- | --- |
| 71 | Elaborar Branch | 1d? | 2023-04-13 16:00 A | 2023-04-14 16:00 | 69 | 60% | 0.38d |
| 72 | Realizar merge da Branch X para a Trunk | 1.88d? | 2023-04-14 16:00 A | 2023-04-18 15:00 | 71 | 20% | 0d |

## Version 2 (saved 2023-06-01)

Note of the change: Merge pull request #2 from teukuka/branch2

Last finish 2023-04-18 → 2023-04-19 (+1d). Complete tasks 17 → 24.

Changed:

| ID | Task | Start | Finish | Duration | Complete | Total float | Other |
| --- | --- | --- | --- | --- | --- | --- | --- |
| 1 | **Chacara** |  | 2023-04-18 15:00 → 2023-04-19 18:00 (+1d) | 14.62d? → 16d? | 45% → 53% |  | was named Projeto Clínica |
| 2 | **Prospecção** |  |  |  | 47% → 83% | 10.38d → 11.75d |  |
| 9 | **Est. Prel. Tam.** |  | 2023-04-03 18:00 A |  | 0% → 100% | 3.5d → none |  |
| 10 | Estimar tamanho do projeto |  | 2023-04-03 17:00 A |  | 0% → 100% | 3.5d → none |  |
| 11 | Revisar estimativa de tamanho do projeto | 2023-04-03 17:00 A | 2023-04-03 18:00 A |  | 0% → 100% | 3.5d → none |  |
| 12 | **Est. Prel. Cronograma e Orçamento** | 2023-04-04 09:00 A | 2023-04-04 11:00 A |  | 0% → 100% | 3.5d → none |  |
| 13 | Elaborar cronograma e orçamento preliminares | 2023-04-04 09:00 A | 2023-04-04 10:00 A |  | 0% → 100% | 3.5d → none |  |
| 14 | Revisar cronograma e orçamento preliminares | 2023-04-04 10:00 A | 2023-04-04 11:00 A |  | 0% → 100% | 3.5d → none |  |
| 15 | **Análises** | 2023-04-04 11:00 A |  |  | 0% → 58% | 3.5d → 0.25d |  |
| 16 | **Documentos de Requisitos** | 2023-04-04 11:00 A | 2023-04-06 18:00 A |  | 0% → 100% | 3.5d → none |  |
| 17 | Reunir-se com o cliente | 2023-04-04 11:00 A | 2023-04-04 15:00 A |  | 0% → 100% | 3.5d → none |  |
| 18 | Elaborar DRE | 2023-04-04 15:00 A | 2023-04-05 18:00 A |  | 0% → 100% | 3.5d → none |  |
| 19 | Revisar DRE | 2023-04-06 09:00 A | 2023-04-06 16:00 A |  | 0% → 100% | 3.5d → none |  |
| 20 | Submeter DTE para aprovação do cliente | 2023-04-06 16:00 A | 2023-04-06 18:00 A |  | 0% → 100% | 3.5d → none |  |
| 24 | **Projeto** | 2023-04-11 09:00 A |  |  | 0% → 25% | 3.5d → 0.12d |  |
| 25 | **Diagrama de classes** | 2023-04-11 09:00 A |  |  | 0% → 25% | 3.5d → 0.06d |  |
| 26 | Elaborar Diagrama de classes | 2023-04-11 09:00 A |  |  | 0% → 50% | 3.5d → 0.06d |  |
| 29 | **Modelos Entidades Relacionamento** | 2023-04-12 09:00 A |  |  | 0% → 25% | 3.5d → 0.12d |  |
| 30 | Elaborar MER | 2023-04-12 09:00 A |  |  | 0% → 50% | 3.5d → 0.12d |  |
| 32 | **Implementação** |  |  |  | 64% → 61% | 3.5d → 4.88d |  |
| 45 | **Release 02** |  | 2023-04-13 10:00 A → 2023-04-13 10:00 |  | 100% → 92% | none → 4.88d |  |
| 46 | **Implementação** |  | 2023-04-13 10:00 A → 2023-04-13 10:00 |  | 100% → 92% | none → 4.88d |  |
| 47 | **RC03** |  | 2023-04-13 10:00 A → 2023-04-13 10:00 |  | 100% → 86% | none → 4.88d |  |
| 49 | Implementar RFSO10 |  | 2023-04-12 17:00 A → 2023-04-12 16:00 | 0.62d? → 0.5d? | 100% → 25% | none → 5.25d |  |
| 50 | Implementar RFS011 |  | 2023-04-12 17:00 A → 2023-04-12 16:00 A | 0.62d? → 0.5d? |  |  |  |
| 54 | Implementar RFSO14 |  | 2023-04-12 17:00 A → 2023-04-12 16:00 A | 0.62d? → 0.5d? |  |  |  |
| 55 | Implementar RFS015 |  | 2023-04-12 17:00 A → 2023-04-12 16:00 A | 0.62d? → 0.5d? |  |  |  |
| 60 | Implementar RFSO17 |  | 2023-04-12 17:00 → 2023-04-12 16:00 | 0.62d → 0.5d |  | 3.75d → 5.25d |  |
| 61 | Implementar RFSO18 |  | 2023-04-12 17:00 → 2023-04-12 16:00 | 0.62d → 0.5d |  | 3.75d → 5.25d |  |
| 62 | Implementar RFSO19 |  | 2023-04-12 17:00 → 2023-04-12 18:00 | 0.62d → 0.75d |  | 3.75d → 5d |  |
| 70 | **Gerência de configuração** |  | 2023-04-18 15:00 → 2023-04-19 18:00 (+1d) | 2.88d? → 4.25d? | 34% → 21% |  |  |
| 71 | Elaborar Branch |  | 2023-04-14 16:00 → 2023-04-18 14:00 (+4d) | 1d? → 2.75d? | 60% → 22% | 0.38d → 0d |  |
| 72 | Realizar merge da Branch X para a Trunk |  | 2023-04-18 15:00 → 2023-04-19 18:00 (+1d) |  |  |  |  |

## Version 3 (saved 2023-06-06)

Last finish 2023-04-19 → 2023-04-20 (+1d). Complete tasks 24 → 15.

Added:

| ID | Task | Duration | Start | Finish | Predecessors | Resources |
| --- | --- | --- | --- | --- | --- | --- |
| 65 | Implementar RFS024 | 0.88d | 2023-04-13 09:00 | 2023-04-13 17:00 | 31 | Mateus |
| 66 | Implementar RFSO25 | 0.62d | 2023-04-13 09:00 | 2023-04-13 15:00 | 31 | Mateus |
| 67 | Implementar RFS026 | 0.62d | 2023-04-13 09:00 | 2023-04-13 15:00 | 31 | Kaze |
| 68 | Implementar RFSO27 | 0.75d | 2023-04-13 09:00 | 2023-04-13 16:00 | 31 | Kaze |

Removed: 54 Implementar RFSO14; 59 Implementar RFSO16; 62 Implementar RFSO19

Changed:

| ID | Task | Start | Finish | Duration | Complete | Total float | Other |
| --- | --- | --- | --- | --- | --- | --- | --- |
| 1 | **Projeto Clínica** |  | 2023-04-19 18:00 → 2023-04-20 17:00 (+1d) | 16d? → 16.88d? | 53% → 38% |  | was named Chacara |
| 2 | **Prospecção** |  | 2023-04-04 11:00 → 2023-04-04 12:00 | 4.25d? → 4.38d? | 83% → 43% | 11.75d → 12.5d |  |
| 9 | **Est. Prel. Tam.** |  | 2023-04-03 18:00 A → 2023-04-04 10:00 (+1d) | 0.25d → 0.38d | 100% → 0% | none → 0d |  |
| 10 | Estimar tamanho do projeto |  | 2023-04-03 17:00 A → 2023-04-03 18:00 | 0.12d → 0.25d | 100% → 0% | none → 0d |  |
| 11 | Revisar estimativa de tamanho do projeto | 2023-04-03 17:00 A → 2023-04-04 09:00 (+1d) | 2023-04-03 18:00 A → 2023-04-04 10:00 (+1d) |  | 100% → 0% | none → 0d |  |
| 12 | **Est. Prel. Cronograma e Orçamento** | 2023-04-04 09:00 A → 2023-04-04 10:00 | 2023-04-04 11:00 A → 2023-04-04 12:00 |  | 100% → 0% | none → 0d |  |
| 13 | Elaborar cronograma e orçamento preliminares | 2023-04-04 09:00 A → 2023-04-04 10:00 | 2023-04-04 10:00 A → 2023-04-04 11:00 |  | 100% → 0% | none → 0d |  |
| 14 | Revisar cronograma e orçamento preliminares | 2023-04-04 10:00 A → 2023-04-04 11:00 | 2023-04-04 11:00 A → 2023-04-04 12:00 |  | 100% → 0% | none → 0d |  |
| 15 | **Análises** | 2023-04-04 11:00 A → 2023-04-04 13:00 | 2023-04-10 18:00 → 2023-04-11 16:00 (+1d) | 4.75d? → 5.38d? | 58% → 0% | 0.25d → 0d |  |
| 16 | **Documentos de Requisitos** | 2023-04-04 11:00 A → 2023-04-04 13:00 | 2023-04-06 18:00 A → 2023-04-07 12:00 (+1d) | 2.75d? → 3d? | 100% → 0% | none → 0d |  |
| 17 | Reunir-se com o cliente | 2023-04-04 11:00 A → 2023-04-04 13:00 | 2023-04-04 15:00 A → 2023-04-04 16:00 |  | 100% → 0% | none → 0d |  |
| 18 | Elaborar DRE | 2023-04-04 15:00 A → 2023-04-04 16:00 | 2023-04-05 18:00 A → 2023-04-06 12:00 (+1d) | 1.38d? → 1.62d? | 100% → 0% | none → 0d |  |
| 19 | Revisar DRE | 2023-04-06 09:00 A → 2023-04-06 13:00 | 2023-04-06 16:00 A → 2023-04-07 10:00 (+1d) |  | 100% → 0% | none → 0d |  |
| 20 | Submeter DTE para aprovação do cliente | 2023-04-06 16:00 A → 2023-04-07 10:00 (+1d) | 2023-04-06 18:00 A → 2023-04-07 12:00 (+1d) |  | 100% → 0% | none → 0d |  |
| 21 | **MRB** | 2023-04-07 09:00 → 2023-04-07 13:00 | 2023-04-10 18:00 → 2023-04-11 16:00 (+1d) | 2d? → 2.38d? |  | 0.25d → 0d |  |
| 22 | Elaborar MRB | 2023-04-07 09:00 → 2023-04-07 13:00 | 2023-04-10 11:00 → 2023-04-10 18:00 | 1.25d? → 1.62d? |  | 0.25d → 0d |  |
| 23 | Revisar MRB | 2023-04-10 11:00 → 2023-04-11 09:00 (+1d) | 2023-04-10 18:00 → 2023-04-11 16:00 (+1d) |  |  | 0.25d → 0d |  |
| 24 | **Projeto** | 2023-04-11 09:00 A → 2023-04-11 16:00 | 2023-04-12 11:00 → 2023-04-12 18:00 |  | 25% → 0% | 0.12d → 0d |  |
| 25 | **Diagrama de classes** | 2023-04-11 09:00 A → 2023-04-11 16:00 | 2023-04-11 18:00 → 2023-04-12 14:00 (+1d) | 1d? → 0.75d? | 25% → 0% | 0.06d → 0d |  |
| 26 | Elaborar Diagrama de classes | 2023-04-11 09:00 A → 2023-04-11 16:00 | 2023-04-11 14:00 → 2023-04-12 11:00 (+1d) |  | 50% → 0% | 0.06d → 0d |  |
| 27 | Revisar Diagrama de classes | 2023-04-11 14:00 → 2023-04-12 11:00 (+1d) | 2023-04-11 17:00 → 2023-04-12 12:00 (+1d) | 0.38d? → 0.12d? |  | 0.06d → 0d |  |
| 28 | Atualizar MRB | 2023-04-11 17:00 → 2023-04-12 13:00 (+1d) | 2023-04-11 18:00 → 2023-04-12 14:00 (+1d) |  |  | 0.06d → 0d |  |
| 29 | **Modelos Entidades Relacionamento** | 2023-04-12 09:00 A → 2023-04-12 14:00 | 2023-04-12 11:00 → 2023-04-12 18:00 | 0.25d? → 0.5d? | 25% → 0% | 0.12d → 0d |  |
| 30 | Elaborar MER | 2023-04-12 09:00 A → 2023-04-12 14:00 | 2023-04-12 10:00 → 2023-04-12 17:00 | 0.12d? → 0.38d? | 50% → 0% | 0.12d → 0d |  |
| 31 | Revisar MER | 2023-04-12 10:00 → 2023-04-12 17:00 | 2023-04-12 11:00 → 2023-04-12 18:00 |  |  | 0.12d → 0d |  |
| 32 | **Implementação** |  | 2023-04-13 10:00 → 2023-04-13 17:00 | 0.88d? → 1.62d? | 61% → 60% | 4.88d → 5d |  |
| 33 | **Release 01** |  | 2023-04-13 10:00 A → 2023-04-13 10:00 |  | 100% → 98% | none → 0.25d |  |
| 34 | **Implementação** |  | 2023-04-13 10:00 A → 2023-04-13 10:00 |  | 100% → 98% | none → 0.25d |  |
| 40 | **RC02** |  | 2023-04-13 10:00 A → 2023-04-13 10:00 |  | 100% → 95% | none → 0.25d |  |
| 44 | Implementar RFSO8 |  | 2023-04-12 16:00 A → 2023-04-13 10:00 (+1d) | 0.5d → 0.62d | 100% → 80% | none → 0.25d |  |
| 45 | **Release 02** |  | 2023-04-13 10:00 → 2023-04-13 15:00 | 0.88d? → 1.38d? | 92% → 87% | 4.88d → 5.25d |  |
| 46 | **Implementação** |  | 2023-04-13 10:00 → 2023-04-13 15:00 | 0.88d? → 1.38d? | 92% → 87% | 4.88d → 5.25d |  |
| 47 | **RC03** |  | 2023-04-13 10:00 A |  | 86% → 100% | 4.88d → none |  |
| 49 | Implementar RFSO10 |  | 2023-04-12 16:00 → 2023-04-12 17:00 A | 0.5d? → 0.62d? | 25% → 100% | 5.25d → none |  |
| 50 | Implementar RFS011 |  | 2023-04-12 16:00 A → 2023-04-12 17:00 A | 0.5d? → 0.62d? |  |  |  |
| 52 | **RC04** |  | 2023-04-13 10:00 A → 2023-04-13 15:00 | 0.88d? → 1.38d? | 100% → 74% | none → 5.25d |  |
| 53 | Implementar RFS016 |  |  |  |  |  | was named Implementar RFS013 |
| 54 | Implementar RFSO17 | 2023-04-12 11:00 A | 2023-04-12 16:00 → 2023-04-12 17:00 A | 0.5d → 0.62d? | 0% → 100% | 5.25d → none |  |
| 55 | Implementar RFSO18 | 2023-04-12 11:00 → 2023-04-13 09:00 (+1d) | 2023-04-12 16:00 → 2023-04-13 15:00 (+1d) | 0.5d → 0.62d? |  |  | resources Kaze → Mateus; baseline start 2023-04-12 11:00 → none; baseline finish 2023-04-12 17:00 → none |
| 56 | Implementar RFS019 |  | 2023-04-12 16:00 A → 2023-04-13 10:00 (+1d) | 0.5d? → 0.75d? | 100% → 83% | none → 5.75d | was named Implementar RFS015 |
| 57 | **Release 03** | 2023-04-12 11:00 → 2023-04-13 09:00 (+1d) | 2023-04-13 10:00 → 2023-04-13 17:00 |  |  | 4.88d → 5d |  |
| 58 | **Implementação** | 2023-04-12 11:00 → 2023-04-13 09:00 (+1d) | 2023-04-13 10:00 → 2023-04-13 17:00 |  |  | 4.88d → 5d |  |
| 59 | **RC05** | 2023-04-12 11:00 → 2023-04-13 09:00 (+1d) | 2023-04-13 10:00 → 2023-04-13 17:00 |  |  | 4.88d → 5d |  |
| 60 | Implementar RFS020 | 2023-04-12 11:00 → 2023-04-13 09:00 (+1d) | 2023-04-13 10:00 → 2023-04-13 17:00 |  |  | 4.88d → 5d |  |
| 61 | Implementar RFSO21 | 2023-04-12 11:00 → 2023-04-13 09:00 (+1d) | 2023-04-12 17:00 → 2023-04-13 15:00 (+1d) |  |  | 5.12d → 5.25d |  |
| 62 | Implementar RFS022 | 2023-04-12 11:00 → 2023-04-13 09:00 (+1d) | 2023-04-12 17:00 → 2023-04-13 15:00 (+1d) |  |  | 5.12d → 5.25d |  |
| 63 | Implementar RFSO23 | 2023-04-12 11:00 → 2023-04-13 09:00 (+1d) | 2023-04-12 17:00 → 2023-04-13 16:00 (+1d) | 0.62d → 0.75d |  |  |  |
| 64 | **RC06** | 2023-04-12 11:00 → 2023-04-13 09:00 (+1d) | 2023-04-13 10:00 → 2023-04-13 17:00 |  |  | 4.88d → 5d |  |
| 69 | **Monitoramento e Controle** |  | 2023-04-13 16:00 → 2023-04-13 17:00 | 0.62d? → 0.75d? | 40% → 33% | 0.6d → 2.6d |  |
| 70 | Acompanhar projeto |  | 2023-04-13 16:00 → 2023-04-13 17:00 | 0.62d? → 0.75d? | 40% → 33% | 0.6d → 2.6d |  |
| 71 | **Gerência de configuração** |  | 2023-04-19 18:00 → 2023-04-20 17:00 (+1d) | 4.25d? → 5.12d? | 21% → 18% |  |  |
| 72 | Elaborar Branch |  | 2023-04-18 14:00 → 2023-04-18 18:00 | 2.75d? → 3.25d? | 22% → 18% |  |  |
| 73 | Realizar merge da Branch X para a Trunk |  | 2023-04-19 18:00 → 2023-04-20 17:00 (+1d) | 1.88d? → 2.25d? | 20% → 17% |  |  |
